# cms项目时间安排表

How a schedule from MS Project changed from version to version. A marks actual dates.

## Version 1 (saved 2013-12-25)

Note of the change: cms项目时间安排表

| ID | Task | Duration | Start | Finish | Predecessors | Total float |
| --- | --- | --- | --- | --- | --- | --- |
| 1 | 远程回放Device组件 | 2d | 2013-12-26 08:30 | 2013-12-27 18:00 |  | 1d |
| 2 | 远程回放插件 | 1d | 2013-12-26 08:30 | 2013-12-26 18:00 |  | 0d |
| 3 | 远程回放时间棒及检索逻辑接入 | 4d | 2013-12-28 08:30 | 2014-01-02 18:00 | 2, 1 | 1d |
| 4 | 远程回放页面回放控制逻辑 | 1d | 2014-01-03 08:30 | 2014-01-03 18:00 | 3 | 1d |
| 5 | commonlib组件存储设置接口文档 | 1d | 2013-12-26 08:30 | 2013-12-26 18:00 |  | 0d |
| 6 | commonlib组件存储设置测试用例文档 | 1d | 2013-12-27 08:30 | 2013-12-27 18:00 | 5, 2 | 0d |
| 7 | commonlib组件存储设置接口测试代码 | 0.5d | 2013-12-28 08:30 | 2013-12-28 14:00 | 6 | 0d |
| 8 | commonlib组件存储设置接口开发 | 0.5d | 2013-12-28 14:00 | 2013-12-28 18:00 | 7, 1 | 10.5d |
| 9 | commonlib组件封装存储设置接口 | 0.5d | 2013-12-30 08:30 | 2013-12-30 14:00 | 8 | 10.5d |
| 10 | commonlib组件录像时间表设置接口文档 | 1d | 2013-12-26 08:30 | 2013-12-26 18:00 |  | 1.5d |
| 11 | commonlib组件录像时间表设置测试用例文档 | 1d | 2013-12-28 14:00 | 2013-12-30 14:00 | 7, 10 | 0d |
| 12 | commonlib组件录像时间表设置测试代码 | 0.5d | 2013-12-30 14:00 | 2013-12-30 18:00 | 11 | 0d |
| 13 | commonlib组件录像时间表代码开发 | 0.5d | 2013-12-31 08:30 | 2013-12-31 14:00 | 12 | 9d |
| 14 | commonlib插件封装录像时间表接口 | 0.5d | 2013-12-31 14:00 | 2013-12-31 18:00 | 13 | 9d |
| 15 | commonlib组件通用设置接口文档 | 1d | 2013-12-27 08:30 | 2013-12-27 18:00 | 5 | 0d |
| 16 | commonlib组件通用设置测试用例文档 | 1d | 2013-12-28 08:30 | 2013-12-28 18:00 | 15, 10 | 0.5d |
| 17 | commonlib组件通用设置测试代码 | 0.5d | 2013-12-30 08:30 | 2013-12-30 14:00 | 16 | 0.5d |
| 18 | commonlib组件通用设置接口开发 | 0.5d | 2013-12-30 14:00 | 2013-12-30 18:00 | 17 | 3.5d |
| 19 | commonlib组件通用设置插件接口封装 | 0.5d | 2013-12-31 08:30 | 2013-12-31 14:00 | 18 | 3.5d |
| 20 | settings activiy接入设置 | 0.5d | 2013-12-30 14:00 | 2013-12-30 18:00 | 17 | 0.5d |
| 21 | 页面接入通用设置，录像时间表，存储设置 | 0.5d | 2014-01-06 08:30 | 2014-01-06 14:00 | 4, 15 | 1d |
| 22 | record组件录像接口文档和preview windows插件实现手动录像接口文档 | 1d | 2013-12-28 08:30 | 2013-12-28 18:00 | 15 | 0d |
| 23 | record组件录像测试用例文档 | 1d | 2013-12-31 08:30 | 2013-12-31 18:00 | 12 | 0d |
| 24 | record组件录像接口测试代码 | 0.5d | 2014-01-02 08:30 | 2014-01-02 14:00 | 23 | 0d |
| 25 | record组件录像接口代码 | 3d | 2013-12-30 08:30 | 2014-01-02 18:00 | 22 | 0d |
| 26 | preview windows 插件封装record组件实现手动录像接口 | 1d | 2013-12-31 14:00 | 2014-01-02 14:00 | 19 | 3.5d |
| 27 | preview windows 手动录像接口文档 | 1d | 2013-12-31 08:30 | 2013-12-31 18:00 | 20 | 0.5d |
| 28 | preview windows插件手动录像 测试用例文档 | 1d | 2014-01-02 14:00 | 2014-01-03 14:00 | 24, 27 | 0d |
| 29 | preview windows 插件手动录像测试代码 | 0.5d | 2014-01-03 14:00 | 2014-01-03 18:00 | 28 | 0d |
| 30 | 页面接入手动录像 | 1d | 2014-01-06 14:00 | 2014-01-07 14:00 | 21, 22 | 1d |
| 31 | local player 组件本地录像检索接口文档 | 1d | 2014-01-03 08:30 | 2014-01-03 18:00 | 25 | 0d |
| 32 | local player 组件本地录像检索接口测试用例文档 | 1d | 2014-01-06 08:30 | 2014-01-06 18:00 | 31, 29 | 0d |
| 33 | local player 组件本地录像检索接口测试用例代码 | 0.5d | 2014-01-07 08:30 | 2014-01-07 14:00 | 32 | 0d |
| 34 | local player 组件本地录像检索代码 | 0.5d | 2014-01-07 14:00 | 2014-01-07 18:00 | 33, 26 | 0.5d |
| 35 | record player 插件封装local player组件检索接口 | 0.5d | 2014-01-08 08:30 | 2014-01-08 14:00 | 34 | 0.5d |
| 36 | 页面接入本地录像检索 | 2d | 2014-01-07 14:00 | 2014-01-09 14:00 | 30, 31 | 1d |
| 37 | local player 组件同步回放接口文档 | 1d | 2014-01-02 08:30 | 2014-01-02 18:00 | 27 | 2.5d |
| 38 | local player 组件同步回放接口用例文档 | 1d | 2014-01-07 14:00 | 2014-01-08 14:00 | 37, 33 | 0d |
| 39 | local player 组件同步回放接口测试代码 | 0.5d | 2014-01-08 14:00 | 2014-01-08 18:00 | 38 | 0d |
| 40 | local player组件同步回放接口代码 | 2d | 2014-01-09 08:30 | 2014-01-10 18:00 | 39, 35 | 0d |
| 41 | local player 组件同步回放接口封入recordplayer插件 | 2d | 2014-01-11 08:30 | 2014-01-13 18:00 | 40 | 0d |
| 42 | 页面接入同步回放 | 2d | 2014-01-09 14:00 | 2014-01-11 14:00 | 37, 36 | 1d |
| 43 | 远程备份 device组件备份接口文档（插件同） | 1d | 2014-01-03 08:30 | 2014-01-03 18:00 | 37 | 4.5d |
| 44 | 远程备份device组件备份接口测试用例文档 | 1d | 2014-01-06 08:30 | 2014-01-06 18:00 | 31, 43 | 4.5d |
| 45 | 远程备份device组件备份接口测试代码 | 0.5d | 2014-01-07 08:30 | 2014-01-07 14:00 | 44 | 4.5d |
| 46 | 远程备份device组件备份接口代码 | 0.5d | 2014-01-07 14:00 | 2014-01-07 18:00 | 45 | 4.5d |
| 47 | 远程备份device组件封装插件 | 0.5d | 2014-01-08 08:30 | 2014-01-08 14:00 | 46 | 4.5d |
| 48 | 页面接入远程备份 | 0.5d | 2014-01-11 14:00 | 2014-01-11 18:00 | 43, 42 | 1d |

## Version 2 (saved 2013-12-31)

Note of the change: settings activity接入本地设置任务延迟

Last finish 2014-01-13 → 2014-01-15 (+2d). Complete tasks 0 → 10.

Changed:

| ID | Task | Start | Finish | Duration | Complete | Total float |
| --- | --- | --- | --- | --- | --- | --- |
| 1 | 远程回放Device组件 | 2013-12-26 08:30 A | 2013-12-27 18:00 A |  | 0% → 100% | 1d → none |
| 2 | 远程回放插件 | 2013-12-26 08:30 A | 2013-12-26 18:00 A |  | 0% → 100% | 0d → none |
| 3 | 远程回放时间棒及检索逻辑接入 | 2013-12-28 08:30 A | 2014-01-02 18:00 A |  | 0% → 100% | 1d → none |
| 5 | commonlib组件存储设置接口文档 | 2013-12-26 08:30 A | 2013-12-26 18:00 A |  | 0% → 100% | 0d → none |
| 6 | commonlib组件存储设置测试用例文档 | 2013-12-27 08:30 A | 2013-12-27 18:00 A |  | 0% → 100% | 0d → none |
| 7 | commonlib组件存储设置接口测试代码 | 2013-12-28 08:30 A | 2013-12-28 14:00 A |  | 0% → 100% | 0d → none |
| 10 | commonlib组件录像时间表设置接口文档 | 2013-12-26 08:30 A | 2013-12-26 18:00 A |  | 0% → 100% | 1.5d → none |
| 11 | commonlib组件录像时间表设置测试用例文档 | 2013-12-28 14:00 A |  |  | 0% → 50% | 0d → 1.5d |
| 15 | commonlib组件通用设置接口文档 | 2013-12-27 08:30 A | 2013-12-27 18:00 A |  | 0% → 100% | 0d → none |
| 16 | commonlib组件通用设置测试用例文档 | 2013-12-28 08:30 A | 2013-12-28 18:00 A |  | 0% → 100% | 0.5d → none |
| 20 | settings activiy接入设置 |  | 2013-12-30 18:00 → 2014-01-02 18:00 (+3d) | 0.5d → 2.5d |  | 0.5d → 0d |
| 22 | record组件录像接口文档和preview windows插件实现手动录像接口文档 | 2013-12-28 08:30 A | 2013-12-28 18:00 A |  | 0% → 100% | 0d → none |
| 25 | record组件录像接口代码 | 2013-12-30 08:30 A |  |  | 0% → 33% | 0d → 1.5d |
| 27 | preview windows 手动录像接口文档 | 2013-12-31 08:30 → 2014-01-03 08:30 (+3d) | 2013-12-31 18:00 → 2014-01-03 18:00 (+3d) |  |  | 0.5d → 0d |
| 28 | preview windows插件手动录像 测试用例文档 | 2014-01-02 14:00 → 2014-01-06 08:30 (+4d) | 2014-01-03 14:00 → 2014-01-06 18:00 (+3d) |  |  |  |
| 29 | preview windows 插件手动录像测试代码 | 2014-01-03 14:00 → 2014-01-07 08:30 (+4d) | 2014-01-03 18:00 → 2014-01-07 14:00 (+4d) |  |  |  |
| 32 | local player 组件本地录像检索接口测试用例文档 | 2014-01-06 08:30 → 2014-01-07 14:00 (+1d) | 2014-01-06 18:00 → 2014-01-08 14:00 (+2d) |  |  |  |
| 33 | local player 组件本地录像检索接口测试用例代码 | 2014-01-07 08:30 → 2014-01-08 14:00 (+1d) | 2014-01-07 14:00 → 2014-01-08 18:00 (+1d) |  |  |  |
| 34 | local player 组件本地录像检索代码 | 2014-01-07 14:00 → 2014-01-09 08:30 (+2d) | 2014-01-07 18:00 → 2014-01-09 14:00 (+2d) |  |  |  |
| 35 | record player 插件封装local player组件检索接口 | 2014-01-08 08:30 → 2014-01-09 14:00 (+1d) | 2014-01-08 14:00 → 2014-01-09 18:00 (+1d) |  |  |  |
| 37 | local player 组件同步回放接口文档 | 2014-01-02 08:30 → 2014-01-06 08:30 (+4d) | 2014-01-02 18:00 → 2014-01-06 18:00 (+4d) |  |  | 2.5d → 2d |
| 38 | local player 组件同步回放接口用例文档 | 2014-01-07 14:00 → 2014-01-09 08:30 (+2d) | 2014-01-08 14:00 → 2014-01-09 18:00 (+1d) |  |  |  |
| 39 | local player 组件同步回放接口测试代码 | 2014-01-08 14:00 → 2014-01-10 08:30 (+2d) | 2014-01-08 18:00 → 2014-01-10 14:00 (+2d) |  |  |  |
| 40 | local player组件同步回放接口代码 | 2014-01-09 08:30 → 2014-01-10 14:00 (+1d) | 2014-01-10 18:00 → 2014-01-13 14:00 (+3d) |  |  |  |
| 41 | local player 组件同步回放接口封入recordplayer插件 | 2014-01-11 08:30 → 2014-01-13 14:00 (+2d) | 2014-01-13 18:00 → 2014-01-15 14:00 (+2d) |  |  |  |
| 43 | 远程备份 device组件备份接口文档（插件同） | 2014-01-03 08:30 → 2014-01-07 08:30 (+4d) | 2014-01-03 18:00 → 2014-01-07 18:00 (+4d) |  |  | 4.5d → 4d |
| 44 | 远程备份device组件备份接口测试用例文档 | 2014-01-06 08:30 → 2014-01-08 08:30 (+2d) | 2014-01-06 18:00 → 2014-01-08 18:00 (+2d) |  |  | 4.5d → 4d |
| 45 | 远程备份device组件备份接口测试代码 | 2014-01-07 08:30 → 2014-01-09 08:30 (+2d) | 2014-01-07 14:00 → 2014-01-09 14:00 (+2d) |  |  | 4.5d → 4d |
| 46 | 远程备份device组件备份接口代码 | 2014-01-07 14:00 → 2014-01-09 14:00 (+2d) | 2014-01-07 18:00 → 2014-01-09 18:00 (+2d) |  |  | 4.5d → 4d |
| 47 | 远程备份device组件封装插件 | 2014-01-08 08:30 → 2014-01-10 08:30 (+2d) | 2014-01-08 14:00 → 2014-01-10 14:00 (+2d) |  |  | 4.5d → 4d |

## Version 3 (saved 2013-12-31)

Note of the change: commonlib组件存储设置接口开发 commonlib组件封装存储设置接口 的代码审核完了 任务8，9项通过

Last finish stays 2014-01-15. Complete tasks 10 → 12.

Changed:

| ID | Task | Start | Finish | Complete | Total float |
| --- | --- | --- | --- | --- | --- |
| 8 | commonlib组件存储设置接口开发 | 2013-12-28 14:00 A | 2013-12-28 18:00 A | 0% → 100% | 10.5d → none |
| 9 | commonlib组件封装存储设置接口 | 2013-12-30 08:30 A | 2013-12-30 14:00 A | 0% → 100% | 10.5d → none |

## Version 4 (saved 2014-01-06)

Note of the change: cms进度更新

Last finish stays 2014-01-15. Complete tasks 12 → 17.

Changed:

| ID | Task | Start | Finish | Complete | Total float |
| --- | --- | --- | --- | --- | --- |
| 11 | commonlib组件录像时间表设置测试用例文档 |  | 2013-12-30 14:00 A | 50% → 100% | 1.5d → none |
| 12 | commonlib组件录像时间表设置测试代码 | 2013-12-30 14:00 A | 2013-12-30 18:00 A | 0% → 100% | 1.5d → none |
| 13 | commonlib组件录像时间表代码开发 | 2013-12-31 08:30 A | 2013-12-31 14:00 A | 0% → 100% | 10.5d → none |
| 14 | commonlib插件封装录像时间表接口 | 2013-12-31 14:00 A | 2013-12-31 18:00 A | 0% → 100% | 10.5d → none |
| 17 | commonlib组件通用设置测试代码 | 2013-12-30 08:30 A | 2013-12-30 14:00 A | 0% → 100% | 0d → none |

## Version 5 (saved 2014-01-06)

Note of the change: git-svn-id: svn://192.168.2.188/qtcms@572 894f9759-fa2a-45cf-9159-0a04a166245e

Last finish stays 2014-01-15. Complete tasks 17 → 21.

Changed:

| ID | Task | Start | Finish | Complete | Total float |
| --- | --- | --- | --- | --- | --- |
| 18 | commonlib组件通用设置接口开发 | 2013-12-30 14:00 A | 2013-12-30 18:00 A | 0% → 100% | 3.5d → none |
| 19 | commonlib组件通用设置插件接口封装 | 2013-12-31 08:30 A | 2013-12-31 14:00 A | 0% → 100% | 3.5d → none |
| 20 | settings activiy接入设置 | 2013-12-30 14:00 A | 2014-01-02 18:00 A | 0% → 100% | 0d → none |
| 27 | preview windows 手动录像接口文档 | 2014-01-03 08:30 A | 2014-01-03 18:00 A | 0% → 100% | 0d → none |

## Version 6 (saved 2014-01-08)

Note of the change: git-svn-id: svn://192.168.2.188/qtcms@597 894f9759-fa2a-45cf-9159-0a04a166245e

Last finish stays 2014-01-15. Complete tasks 21 → 25.

Changed:

| ID | Task | Start | Finish | Complete | Total float |
| --- | --- | --- | --- | --- | --- |
| 23 | record组件录像测试用例文档 | 2013-12-31 08:30 A | 2013-12-31 18:00 A | 0% → 100% | 1.5d → none |
| 24 | record组件录像接口测试代码 | 2014-01-02 08:30 A | 2014-01-02 14:00 A | 0% → 100% | 1.5d → none |
| 31 | local player 组件本地录像检索接口文档 | 2014-01-03 08:30 A | 2014-01-03 18:00 A | 0% → 100% | 1.5d → none |
| 37 | local player 组件同步回放接口文档 | 2014-01-06 08:30 A | 2014-01-06 18:00 A | 0% → 100% | 2d → none |

## Version 7 (saved 2014-01-13)

Note of the change: 添加release_1.7(内测说明文档)

Last finish stays 2014-01-15. Complete tasks 25 → 34.

Changed:

| ID | Task | Start | Finish | Complete | Total float |
| --- | --- | --- | --- | --- | --- |
| 4 | 远程回放页面回放控制逻辑 | 2014-01-03 08:30 A | 2014-01-03 18:00 A | 0% → 100% | 1d → none |
| 21 | 页面接入通用设置，录像时间表，存储设置 | 2014-01-06 08:30 A | 2014-01-06 14:00 A | 0% → 100% | 1d → none |
| 26 | preview windows 插件封装record组件实现手动录像接口 | 2013-12-31 14:00 A | 2014-01-02 14:00 A | 0% → 100% | 3.5d → none |
| 28 | preview windows插件手动录像 测试用例文档 | 2014-01-06 08:30 A | 2014-01-06 18:00 A | 0% → 100% | 0d → none |
| 29 | preview windows 插件手动录像测试代码 | 2014-01-07 08:30 A | 2014-01-07 14:00 A | 0% → 100% | 0d → none |
| 32 | local player 组件本地录像检索接口测试用例文档 | 2014-01-07 14:00 A | 2014-01-08 14:00 A | 0% → 100% | 0d → none |
| 33 | local player 组件本地录像检索接口测试用例代码 | 2014-01-08 14:00 A | 2014-01-08 18:00 A | 0% → 100% | 0d → none |
| 34 | local player 组件本地录像检索代码 | 2014-01-09 08:30 A | 2014-01-09 14:00 A | 0% → 100% | 0.5d → none |
| 43 | 远程备份 device组件备份接口文档（插件同） | 2014-01-07 08:30 A | 2014-01-07 18:00 A | 0% → 100% | 4d → none |
